# WBSTool Project

Schedule from ProjectLibre, 2019-01-01 to 2019-04-30.

## Calendars

- Standard: Mon-Fri 08:00-12:00, 13:00-17:00; Sat-Sun off.

## Resources

| Resource |
| --- |
| No Asignado |
| Programador Junior1 |
| Programador Junior2 |
| Analista-Diseñador |
| Analista-Programador |
| Programador Senior |
| Director de proyecto |
| Personal de empresa |

## Schedule

| ID | WBS | Task | Duration | Start | Finish | Total slack | Constraint | Resources |
| --- | --- | --- | --- | --- | --- | --- | --- | --- |
| 1 | 1 | **Proyecto de sistema para bar tecnológico** | 85.88d? | 2019-01-01 09:00 | 2019-04-30 17:00 |  | start no earlier than 2019-01-01 08:00 |  |
| 2 | 1.1 | **Tareas de comunicación** | 85.06d | 2019-01-01 09:00 | 2019-04-30 09:29 | 81.3d |  |  |
| 3 | 1.1.1 | **Reuniones equipo** | 85.06d | 2019-01-01 09:00 | 2019-04-30 09:29 | 81.3d |  |  |
| 4 | 1.1.1.1 | Reunión equipo 1 | 0.06d | 2019-01-01 09:00 | 2019-01-01 09:30 | 125.42d |  | Programador Junior1; Programador Junior2; Analista-Diseñador; Analista-Programador; Programador Senior; Director de proyecto |
| 5 | 1.1.1.2 | Reunión equipo 2 | 0.06d | 2019-01-08 09:00 | 2019-01-08 09:29 | 8081.3d | start no earlier than 2019-01-08 09:00 | Programador Junior1; Programador Junior2; Analista-Diseñador; Analista-Programador; Programador Senior; Director de proyecto |
| 6 | 1.1.1.3 | Reunión equipo 3 | 0.06d | 2019-01-15 09:00 | 2019-01-15 09:29 | 7581.3d | start no earlier than 2019-01-15 09:00 | Programador Junior1; Programador Junior2; Analista-Diseñador; Analista-Programador; Programador Senior; Director de proyecto |
| 7 | 1.1.1.4 | Reunión equipo 4 | 0.06d | 2019-01-22 09:00 | 2019-01-22 09:29 | 7081.3d | start no earlier than 2019-01-22 09:00 | Programador Junior1; Programador Junior2; Analista-Diseñador; Analista-Programador; Programador Senior; Director de proyecto |
| 8 | 1.1.1.5 | Reunión equipo 5 | 0.06d | 2019-01-29 09:00 | 2019-01-29 09:29 | 6581.3d | start no earlier than 2019-01-29 09:00 | Programador Junior1; Programador Junior2; Analista-Diseñador; Analista-Programador; Programador Senior; Director de proyecto |
| 9 | 1.1.1.6 | Reunión equipo 6 | 0.06d | 2019-02-05 09:00 | 2019-02-05 09:29 | 6081.3d | start no earlier than 2019-02-05 09:00 | Programador Junior1; Programador Junior2; Analista-Diseñador; Analista-Programador; Programador Senior; Director de proyecto |
| 10 | 1.1.1.7 | Reunión equipo 7 | 0.06d | 2019-02-12 09:00 | 2019-02-12 09:29 | 5581.3d | start no earlier than 2019-02-12 09:00 | Programador Junior1; Programador Junior2; Analista-Diseñador; Analista-Programador; Programador Senior; Director de proyecto |
| 11 | 1.1.1.8 | Reunión equipo 8 | 0.06d | 2019-02-19 09:00 | 2019-02-19 09:29 | 5081.3d | start no earlier than 2019-02-19 09:00 | Programador Junior1; Programador Junior2; Analista-Diseñador; Analista-Programador; Programador Senior; Director de proyecto |
| 12 | 1.1.1.9 | Reunión equipo 9 | 0.06d | 2019-02-26 09:00 | 2019-02-26 09:29 | 4581.3d | start no earlier than 2019-02-26 09:00 | Programador Junior1; Programador Junior2; Analista-Diseñador; Analista-Programador; Programador Senior; Director de proyecto |
| 13 | 1.1.1.10 | Reunión equipo 10 | 0.06d | 2019-03-05 09:00 | 2019-03-05 09:29 | 4081.3d | start no earlier than 2019-03-05 09:00 | Programador Junior1; Programador Junior2; Analista-Diseñador; Analista-Programador; Programador Senior; Director de proyecto |
| 14 | 1.1.1.11 | Reunión equipo 11 | 0.06d | 2019-03-12 09:00 | 2019-03-12 09:29 | 3581.3d | start no earlier than 2019-03-12 09:00 | Programador Junior1; Programador Junior2; Analista-Diseñador; Analista-Programador; Programador Senior; Director de proyecto |
| 15 | 1.1.1.12 | Reunion equipo 12 | 0.06d | 2019-03-19 09:00 | 2019-03-19 09:29 | 3081.3d | start no earlier than 2019-03-19 09:00 | Programador Junior1; Programador Junior2; Analista-Diseñador; Analista-Programador; Programador Senior; Director de proyecto |
| 16 | 1.1.1.13 | Reunión equipo 13 | 0.06d | 2019-03-26 09:00 | 2019-03-26 09:29 | 2581.3d | start no earlier than 2019-03-26 09:00 | Programador Junior1; Programador Junior2; Analista-Diseñador; Analista-Programador; Programador Senior; Director de proyecto |
| 17 | 1.1.1.14 | Reunión equipo 14 | 0.06d | 2019-04-02 09:00 | 2019-04-02 09:29 | 2081.3d | start no earlier than 2019-04-02 09:00 | Programador Junior1; Programador Junior2; Analista-Diseñador; Analista-Programador; Programador Senior; Director de proyecto |
| 18 | 1.1.1.15 | Reunión equipo 15 | 0.06d | 2019-04-09 09:00 | 2019-04-09 09:29 | 1581.3d | start no earlier than 2019-04-09 09:00 | Programador Junior1; Programador Junior2; Analista-Diseñador; Analista-Programador; Programador Senior; Director de proyecto |
| 19 | 1.1.1.16 | Reunión equipo 16 | 0.06d | 2019-04-16 09:00 | 2019-04-16 09:29 | 1081.3d | start no earlier than 2019-04-16 09:00 | Programador Junior1; Programador Junior2; Analista-Diseñador; Analista-Programador; Programador Senior; Director de proyecto |
| 20 | 1.1.1.17 | Reunión de equipo 17 | 0.06d | 2019-04-23 09:00 | 2019-04-23 09:29 | 581.3d | start no earlier than 2019-04-23 09:00 | Programador Junior1; Programador Junior2; Analista-Diseñador; Analista-Programador; Programador Senior; Director de proyecto |
| 21 | 1.1.1.18 | Reunión de equipo 18 | 0.06d | 2019-04-30 09:00 | 2019-04-30 09:29 | 81.3d | start no earlier than 2019-04-30 09:00 | Programador Junior1; Programador Junior2; Analista-Diseñador; Analista-Programador; Programador Senior; Director de proyecto |
| 22 | 1.1.2 | **Reuniones clientes** | 64.06d | 2019-01-30 09:00 | 2019-04-30 09:29 | 81.3d |  |  |
| 23 | 1.1.2.1 | Reunión cliente 1 | 0.06d | 2019-01-30 09:00 | 2019-01-30 09:29 | 6481.3d | start no earlier than 2019-01-30 09:00 | Analista-Diseñador |
| 24 | 1.1.2.2 | Reunión cliente 2 | 0.06d | 2019-02-28 09:00 | 2019-02-28 09:29 | 4381.3d | start no earlier than 2019-02-28 09:00 | Analista-Diseñador |
| 25 | 1.1.2.3 | Reunión cliente 3 | 0.06d | 2019-03-30 09:00 | 2019-04-01 08:29 | 2193.8d | start no earlier than 2019-03-30 09:00 | Analista-Diseñador |
| 26 | 1.1.2.4 | Reunión cliente 4 | 0.06d | 2019-04-30 09:00 | 2019-04-30 09:29 | 81.3d | start no earlier than 2019-04-30 09:00 | Analista-Diseñador |

| ID | WBS | Task | Duration | Start | Finish | Predecessors | Total slack | Constraint | Resources |
| --- | --- | --- | --- | --- | --- | --- | --- | --- | --- |
| 27 | 1.2 | **Tareas de gestión de Costes** | 75.88d? | 2019-01-15 09:00 | 2019-04-30 17:00 |  |  |  |  |
| 28 | 1.2.1 | Control de costes 1 | 0.88d? | 2019-01-15 09:00 | 2019-01-15 17:00 |  | 7500d | start no earlier than 2019-01-15 09:00 | Director de proyecto [50%] |
| 29 | 1.2.2 | Control de costes 2 | 0.88d? | 2019-01-30 09:00 | 2019-01-30 17:00 |  | 6400d | start no earlier than 2019-01-30 09:00 | Director de proyecto [50%] |
| 30 | 1.2.3 | Control de costes 3 | 0.88d? | 2019-02-15 09:00 | 2019-02-15 17:00 |  | 5200d | start no earlier than 2019-02-15 09:00 | Director de proyecto [50%] |
| 31 | 1.2.4 | Control de costes 4 | 0.88d | 2019-03-02 09:00 | 2019-03-04 16:00 |  | 4112.5d | start no earlier than 2019-03-02 09:00 | Director de proyecto [50%] |
| 32 | 1.2.5 | Control de costes 5 | 0.88d | 2019-03-16 09:00 | 2019-03-18 16:00 |  | 3112.5d | start no earlier than 2019-03-16 09:00 | Director de proyecto [50%] |
| 33 | 1.2.6 | Control de costes 6 | 0.88d | 2019-03-30 09:00 | 2019-04-01 16:00 |  | 2112.5d | start no earlier than 2019-03-30 09:00 | Director de proyecto [50%] |
| 34 | 1.2.7 | Control de costes 7 | 0.88d? | 2019-04-15 09:00 | 2019-04-15 17:00 |  | 1100d | start no earlier than 2019-04-15 09:00 | Director de proyecto [50%] |
| 35 | 1.2.8 | Control de costes 8 | 0.88d? | 2019-04-30 09:00 | 2019-04-30 17:00 |  |  | start no earlier than 2019-04-30 09:00 | Director de proyecto [50%] |
| 36 | 1.2.9 | Informe de costes 1 | 0.88d? | 2019-01-15 09:00 | 2019-01-15 17:00 |  | 7500d | start no earlier than 2019-01-15 09:00 | Director de proyecto [50%] |
| 37 | 1.2.10 | Informe de costes 2 | 0.88d? | 2019-01-30 09:00 | 2019-01-30 17:00 |  | 6400d | start no earlier than 2019-01-30 09:00 | Director de proyecto [50%] |
| 38 | 1.2.11 | Informe de costes 3 | 0.88d? | 2019-02-15 09:00 | 2019-02-15 17:00 |  | 5200d | start no earlier than 2019-02-15 09:00 | Director de proyecto [50%] |
| 39 | 1.2.12 | Informe de costes 4 | 0.88d | 2019-03-02 09:00 | 2019-03-04 16:00 |  | 4112.5d | start no earlier than 2019-03-02 09:00 | Director de proyecto [50%] |
| 40 | 1.2.13 | Informe de costes 5 | 0.88d? | 2019-03-15 09:00 | 2019-03-15 17:00 |  | 3200d | start no earlier than 2019-03-15 09:00 | Director de proyecto [50%] |
| 41 | 1.2.14 | Informe de costes 6 | 0.88d | 2019-03-30 09:00 | 2019-04-01 16:00 |  | 2112.5d | start no earlier than 2019-03-30 09:00 | Director de proyecto [50%] |
| 42 | 1.2.15 | Informe de costes 7 | 0.88d? | 2019-04-15 09:00 | 2019-04-15 17:00 |  | 1100d | start no earlier than 2019-04-15 09:00 | Director de proyecto [50%] |
| 43 | 1.2.16 | Informe de costes 8 | 0.88d? | 2019-04-30 09:00 | 2019-04-30 17:00 |  |  | start no earlier than 2019-04-30 09:00 | Director de proyecto [50%] |
| 44 | 1.3 | **Respuestas iniciales a riesgos** | 1.75d | 2019-01-01 09:30 | 2019-01-02 16:30 |  | 125.42d |  |  |
| 45 | 1.3.1 | Crear Plan de incentivos | 1d | 2019-01-01 09:30 | 2019-01-02 09:30 | 4 | 125.42d | start no earlier than 2019-01-01 09:00 | Director de proyecto [50%] |
| 46 | 1.3.2 | Plan de comportamiento | 0.5d | 2019-01-02 09:30 | 2019-01-02 14:30 | 45 | 125.42d |  | Director de proyecto [50%] |
| 47 | 1.3.3 | Crear plan de errores y problemas | 0.25d | 2019-01-02 14:30 | 2019-01-02 16:30 | 46 | 125.42d |  | Director de proyecto [50%]; Analista-Programador [50%] |
| 48 | 1.4 | **Control de Comunicación** | 1d? | 2019-01-01 09:00 | 2019-01-02 09:00 |  | 8487.5d |  |  |
| 49 | 1.4.1 | Reuniones de resolución | 1d? | 2019-01-01 09:00 | 2019-01-02 09:00 |  | 8487.5d |  |  |
| 50 | 1.4.2 | Realización de informes | 1d? | 2019-01-01 09:00 | 2019-01-02 09:00 |  | 8487.5d |  |  |

| ID | WBS | Task | Duration | Start | Finish | Predecessors | Total slack | Constraint | Resources |
| --- | --- | --- | --- | --- | --- | --- | --- | --- | --- |
| 51 | 1.1 | **Análisis de requisitos del sistema** | 17.85d | 2019-01-02 16:30 | 2019-01-28 15:18 | 44 | 125.42d |  |  |
| 52 | 1.1.1 | **Identificación de las necesidades del cliente** | 4.1d | 2019-01-02 16:30 | 2019-01-09 08:18 |  | 125.42d |  |  |
| 53 | 1.1.1.1 | **Especificación informal del sistema** | 4.1d | 2019-01-02 16:30 | 2019-01-09 08:18 |  | 125.42d |  |  |
| 54 | 1.1.1.1.1 | **Técnica de obtención de requisitos** | 3d | 2019-01-02 16:30 | 2019-01-07 16:30 |  | 125.42d |  |  |
| 55 | 1.5.1.1.1.1 | Preparar preguntas y temáticas para entrevista inicial | 0.5d | 2019-01-02 16:30 | 2019-01-03 11:30 |  | 125.42d |  | Analista-Diseñador |
| 56 | 1.5.1.1.1.2 | Entrevistar jefe de proyecto | 0.5d | 2019-01-03 11:30 | 2019-01-03 16:30 | 55 | 125.42d |  | Analista-Diseñador; Director de proyecto |
| 57 | 1.5.1.1.1.3 | Cuestionar futuros empleados para conocer sus necesidades | 1d | 2019-01-03 16:30 | 2019-01-04 16:30 | 56 | 125.42d |  | Analista-Diseñador |
| 58 | 1.5.1.1.1.4 | Cuestionar posibles clientes para conocer sus preferencias | 1d | 2019-01-04 16:30 | 2019-01-07 16:30 | 57 | 125.42d |  | Analista-Diseñador |
| 59 | 1.1.1.2 | **Determinación informal de aspectos del sistema** | 1.1d | 2019-01-07 16:30 | 2019-01-09 08:18 | 54 | 125.42d |  |  |
| 60 | 1.5.1.1.2.1 | Determinar necesidades de jefe de proyectos | 0.5d | 2019-01-07 16:30 | 2019-01-08 11:30 |  | 125.42d |  | Analista-Diseñador; Director de proyecto |
| 61 | 1.1.1.2.1 | **Determinación informal de funciones** | 0.6d | 2019-01-08 11:30 | 2019-01-09 08:18 | 60 | 125.42d |  |  |
| 62 | 1.5.1.1.2.2.1 | Cuestionar futuros empleados para conocer sus necesidades | 0.1d | 2019-01-08 11:30 | 2019-01-08 13:18 |  | 125.42d |  | Analista-Diseñador |
| 63 | 1.5.1.1.2.2.2 | Cuestionar posibles clientes para conocer sus preferencias | 0.1d | 2019-01-08 16:30 | 2019-01-09 08:18 | 74 | 125.42d | start no earlier than 2019-01-04 11:12 | Analista-Diseñador |
| 64 | 1.1.1.2.2 | **Determinación informal de información manejada** | 0.2d | 2019-01-08 11:30 | 2019-01-08 14:06 | 60 | 135.42d |  |  |
| 65 | 1.5.1.1.2.3.1 | Cuestionar futuros empleados para conocer sus necesidades | 0.1d | 2019-01-08 13:18 | 2019-01-08 14:06 | 62 | 125.42d |  | Analista-Diseñador |
| 66 | 1.5.1.1.2.3.2 | Cuestionar posibles clientes para conocer sus preferencias | 0.1d | 2019-01-08 11:30 | 2019-01-08 13:18 | 63 | 145.42d |  | Analista-Diseñador |
| 67 | 1.1.1.2.3 | **Determinación informal de interfaces del sistema** | 0.2d | 2019-01-08 13:18 | 2019-01-08 14:54 | 60 | 135.42d |  |  |
| 68 | 1.5.1.1.2.4.1 | Cuestionar futuros empleados para conocer sus necesidades | 0.1d | 2019-01-08 14:06 | 2019-01-08 14:54 | 65 | 125.42d |  | Analista-Diseñador |
| 69 | 1.5.1.1.2.4.2 | Cuestionar posibles clientes para conocer sus preferencias | 0.1d | 2019-01-08 13:18 | 2019-01-08 14:06 | 66 | 145.42d |  | Analista-Diseñador |
| 70 | 1.1.1.2.4 | **Determinación informal de rendimiento del sistema** | 0.2d | 2019-01-08 14:06 | 2019-01-08 15:42 | 60 | 135.42d |  |  |
| 71 | 1.5.1.1.2.5.1 | Cuestionar futuros empleados para conocer sus necesidades | 0.1d | 2019-01-08 14:54 | 2019-01-08 15:42 | 68 | 125.42d |  | Analista-Diseñador |
| 72 | 1.5.1.1.2.5.2 | Cuestionar posibles clientes para conocer sus preferencias | 0.1d | 2019-01-08 14:06 | 2019-01-08 14:54 | 69 | 145.42d |  | Analista-Diseñador |
| 73 | 1.1.1.2.5 | **Determinación informal de las restricciones del sistema** | 0.2d | 2019-01-08 14:54 | 2019-01-08 16:30 | 60 | 135.42d |  |  |
| 74 | 1.5.1.1.2.6.1 | Cuestionar futuros empleados para conocer sus necesidades | 0.1d | 2019-01-08 15:42 | 2019-01-08 16:30 | 71 | 125.42d |  | Analista-Diseñador |
| 75 | 1.5.1.1.2.6.2 | Cuestionar posibles clientes para conocer sus preferencias | 0.1d | 2019-01-08 14:54 | 2019-01-08 15:42 | 72 | 145.42d |  | Analista-Diseñador |

| ID | WBS | Task | Duration | Start | Finish | Predecessors | Total slack | Resources |
| --- | --- | --- | --- | --- | --- | --- | --- | --- |
| 76 | 1.1.2 | **Asignación de funciones a cada elemento del sistema** | 5d | 2019-01-09 08:18 | 2019-01-16 08:18 | 52 | 125.42d |  |
| 77 | 1.1.2.1 | **Alternativas de creación del sistema** | 2.5d | 2019-01-09 08:18 | 2019-01-11 13:18 |  | 125.42d |  |
| 78 | 1.5.2.1.1 | Buscar tecnologías y metodologías alternativas | 2.5d | 2019-01-09 08:18 | 2019-01-11 13:18 |  | 125.42d | Analista-Diseñador |
| 79 | 1.5.2.2 | Informar del progreso de la semana al Jefe de proyecto | 0.12d | 2019-01-11 13:18 | 2019-01-11 14:18 | 77 | 125.42d | Analista-Diseñador; Director de proyecto |
| 80 | 1.1.2.2 | **Validación de las alternativas de creación del sistema** | 2.38d | 2019-01-11 14:18 | 2019-01-16 08:18 | 79 | 125.42d |  |
| 81 | 1.5.2.3.1 | Analizar las alternativas obtenidas | 1d | 2019-01-11 14:18 | 2019-01-14 14:18 |  | 125.42d | Analista-Diseñador |
| 82 | 1.5.2.3.2 | Comparar las alternativas con la propuesta original | 1d | 2019-01-14 14:18 | 2019-01-15 14:18 | 81 | 125.42d | Analista-Diseñador |
| 83 | 1.5.2.3.3 | Decidir finalmente que tecnología usar | 0.25d | 2019-01-15 14:18 | 2019-01-15 16:18 | 82 | 125.42d | Analista-Diseñador |
| 84 | 1.5.2.3.4 | Informar al Jefe del progreso de la semana | 0.12d | 2019-01-15 16:18 | 2019-01-16 08:18 | 83 | 125.42d | Analista-Diseñador; Director de proyecto |
| 85 | 1.1.3 | **Evaluación de la viabilidad del sistema** | 7.62d | 2019-01-16 08:18 | 2019-01-25 14:18 | 76 | 125.42d |  |
| 86 | 1.1.3.1 | **Estudio de viabilidad económico** | 2.5d | 2019-01-16 08:18 | 2019-01-18 13:18 |  | 125.42d |  |
| 87 | 1.5.3.1.1 | Realizar análisis de costes económicos | 0.62d | 2019-01-16 08:18 | 2019-01-16 14:18 |  | 125.42d | Analista-Diseñador |
| 88 | 1.5.3.1.2 | Realizar análisis de mercado | 0.62d | 2019-01-16 14:18 | 2019-01-17 10:18 | 87 | 125.42d | Analista-Diseñador |
| 89 | 1.5.3.1.3 | Realizar estimaciones coste-beneficio y tiempo-beneficio | 0.62d | 2019-01-17 10:18 | 2019-01-17 16:18 | 88 | 125.42d | Analista-Diseñador |
| 90 | 1.5.3.1.4 | Reunirse con el jefe para decidir su el proyecto se considera viable | 0.62d | 2019-01-17 16:18 | 2019-01-18 13:18 | 89 | 125.42d | Analista-Diseñador |
| 91 | 1.1.3.2 | **Estudio de viabilidad técnico** | 1.75d | 2019-01-18 13:18 | 2019-01-22 10:18 | 86 | 125.42d |  |
| 92 | 1.5.3.2.1 | Estudiar las tecnologías disponibles para el proyecto | 0.62d | 2019-01-18 13:18 | 2019-01-21 09:18 |  | 125.42d | Analista-Programador |
| 93 | 1.5.3.2.2 | Analizar recursos y tecnologías a las que tiene acceso la empresa | 0.25d | 2019-01-21 09:18 | 2019-01-21 11:18 | 92 | 125.42d | Analista-Programador |
| 94 | 1.5.3.2.3 | Analizar recursos y tecnologías de terceros que podrían comprarse o contratarse | 0.25d | 2019-01-21 11:18 | 2019-01-21 14:18 | 93 | 125.42d | Analista-Programador |
| 95 | 1.5.3.2.4 | Analizar con la información obtenida si el proyecto es viable | 0.62d | 2019-01-21 14:18 | 2019-01-22 10:18 | 94 | 125.42d | Analista-Programador |
| 96 | 1.5.3.3 | Informar al jefe del progreso semanal | 0.12d | 2019-01-22 10:18 | 2019-01-22 11:18 | 91 | 125.42d | Analista-Programador; Director de proyecto |
| 97 | 1.1.3.3 | **Estudio de viabilidad legal** | 2d | 2019-01-22 11:18 | 2019-01-24 11:18 | 91, 96 | 125.42d |  |
| 98 | 1.5.3.4.1 | Estudiar las leyes relacionadas con la parte tecnológica del proyecto | 0.5d | 2019-01-22 11:18 | 2019-01-22 16:18 |  | 125.42d | Director de proyecto |
| 99 | 1.5.3.4.2 | Estudiar las leyes relacionadas con al parte de hostelería del proyecto | 0.5d | 2019-01-22 16:18 | 2019-01-23 11:18 | 98 | 125.42d | Director de proyecto |
| 100 | 1.5.3.4.3 | Estudiar las leyes relacionadas con salud e higiene de local | 0.5d | 2019-01-23 11:18 | 2019-01-23 16:18 | 99 | 125.42d | Director de proyecto |
| 101 | 1.5.3.4.4 | Realizar un informe sobre los estudios legales | 0.38d | 2019-01-23 16:18 | 2019-01-24 10:18 | 100 | 125.42d | Director de proyecto |
| 102 | 1.5.3.4.5 | Analizar con la información obtenida si el proyecto es legalmente viable | 0.12d | 2019-01-24 10:18 | 2019-01-24 11:18 | 101 | 125.42d | Director de proyecto |

| ID | WBS | Task | Duration | Start | Finish | Predecessors | Total slack | Resources |
| --- | --- | --- | --- | --- | --- | --- | --- | --- |
| 103 | 1.1.3.4 | **Estudio de viabilidad de plazos** | 1.25d | 2019-01-24 11:18 | 2019-01-25 14:18 | 97 | 125.42d |  |
| 104 | 1.5.3.5.1 | Realizar análisis de costes temporales | 1d | 2019-01-24 11:18 | 2019-01-25 11:18 |  | 125.42d | Analista-Diseñador |
| 105 | 1.5.3.5.2 | Realizar planificación de distribución de trabajo | 0.25d | 2019-01-24 11:18 | 2019-01-24 14:18 |  | 200.42d | Analista-Diseñador |
| 106 | 1.5.3.5.3 | Determinar si el proyecto es viable en el tiempo elegido | 0.25d | 2019-01-25 11:18 | 2019-01-25 14:18 | 105, 104 | 125.42d | Analista-Diseñador |
| 107 | 1.1.4 | **Obtención de una definición del sistema** | 1.12d | 2019-01-25 14:18 | 2019-01-28 15:18 | 85 | 125.42d |  |
| 108 | 1.1.4.1 | **Especificación formal del sistema** | 0.4d | 2019-01-25 14:18 | 2019-01-28 08:30 |  | 125.42d |  |
| 109 | 1.1.4.1.1 | **Diagrama de contexto** | 0.2d | 2019-01-25 14:18 | 2019-01-25 15:54 |  | 125.42d |  |
| 110 | 1.5.4.1.1.1 | Dibujar el diagrama de contexto | 0.2d | 2019-01-25 14:18 | 2019-01-25 15:54 |  | 125.42d | Analista-Programador |
| 111 | 1.1.4.1.2 | **Diagrama de sistema** | 0.2d | 2019-01-25 15:54 | 2019-01-28 08:30 | 109 | 125.42d |  |
| 112 | 1.5.4.1.2.1 | Dibujar el diagrama de sistema | 0.2d | 2019-01-25 15:54 | 2019-01-28 08:30 |  | 125.42d | Analista-Programador |
| 113 | 1.1.4.2 | **Representación del sistema** | 0.6d | 2019-01-28 08:30 | 2019-01-28 14:18 | 108 | 125.42d |  |
| 114 | 1.1.4.2.1 | **Diagramas de flujo de datos** | 0.2d | 2019-01-28 08:30 | 2019-01-28 10:06 |  | 125.42d |  |
| 115 | 1.5.4.2.1.1 | Dibujar el diagrama de sistema | 0.2d | 2019-01-28 08:30 | 2019-01-28 10:06 |  | 125.42d | Analista-Diseñador |
| 116 | 1.1.4.2.2 | **Diagramas de flujo de control** | 0.2d | 2019-01-28 10:06 | 2019-01-28 11:42 | 114 | 125.42d |  |
| 117 | 1.5.4.2.2.1 | Dibujar el diagrama de sistema | 0.2d | 2019-01-28 10:06 | 2019-01-28 11:42 |  | 125.42d | Analista-Diseñador |
| 118 | 1.1.4.2.3 | **Diagramas del ámbito de la información** | 0.2d | 2019-01-28 11:42 | 2019-01-28 14:18 | 116 | 125.42d |  |
| 119 | 1.5.4.2.3.1 | Dibujar el diagrama de sistema | 0.2d | 2019-01-28 11:42 | 2019-01-28 14:18 |  | 125.42d | Analista-Diseñador |
| 120 | 1.5.4.3 | Informar al Jefe del progreso semanal | 0.12d | 2019-01-28 14:18 | 2019-01-28 15:18 | 113 | 125.42d | Analista-Diseñador; Director de proyecto |
| 121 | 1.2 | **Análisis de requisitos del software** | 2.75d | 2019-01-28 15:18 | 2019-01-31 13:18 | 51 | 125.42d |  |
| 122 | 1.2.1 | **Extracción o determinación de requisitos** | 0.38d | 2019-01-28 15:18 | 2019-01-29 09:18 |  | 125.42d |  |
| 123 | 1.2.1.1 | **Documentos de reuniones con cliente** | 0.12d | 2019-01-28 15:18 | 2019-01-28 16:18 |  | 125.42d |  |
| 124 | 1.6.1.1.1 | Realizar un acta de reunión para la reunión con el cliente | 0.12d | 2019-01-28 15:18 | 2019-01-28 16:18 |  | 125.42d | Analista-Diseñador |
| 125 | 1.6.1.1.2 | Realizar un informe sobre las solicitudes e información que se obtuvo del cliente | 0.12d | 2019-01-28 15:18 | 2019-01-28 16:18 |  | 125.42d | Analista-Diseñador; Analista-Programador |
| 126 | 1.2.1.2 | **Especificación informal de requisitos software** | 0.25d | 2019-01-28 16:18 | 2019-01-29 09:18 | 123 | 125.42d |  |
| 127 | 1.6.1.2.1 | Redactar un primer informe de los requisitos del software a partir del informe de reunión con el cliente | 0.25d | 2019-01-28 16:18 | 2019-01-29 09:18 |  | 125.42d | Analista-Diseñador; Analista-Programador |

| ID | WBS | Task | Duration | Start | Finish | Predecessors | Total slack | Resources |
| --- | --- | --- | --- | --- | --- | --- | --- | --- |
| 128 | 1.2.2 | **Análisis de requisitos** | 0.75d | 2019-01-29 09:18 | 2019-01-29 16:18 | 122 | 125.42d |  |
| 129 | 1.2.2.1 | **Validación de especificación informal** | 0.12d | 2019-01-29 09:18 | 2019-01-29 10:18 |  | 125.42d |  |
| 130 | 1.6.2.1.1 | Analizar especificación informal para posibles mejoras | 0.12d | 2019-01-29 09:18 | 2019-01-29 10:18 |  | 125.42d | Analista-Diseñador |
| 131 | 1.6.2.1.2 | Buscar errores en la especificación informal | 0.12d | 2019-01-29 09:18 | 2019-01-29 10:18 |  | 125.42d | Analista-Programador |
| 132 | 1.2.2.2 | **Resolución de inconsistencias** | 0.25d | 2019-01-29 10:18 | 2019-01-29 13:18 | 129 | 125.42d |  |
| 133 | 1.6.2.2.1 | Corregir errores en la especificación informal | 0.25d | 2019-01-29 10:18 | 2019-01-29 13:18 |  | 125.42d | Analista-Programador |
| 134 | 1.6.2.2.2 | Encontrar redundancias y discrepancias en la especificación informal | 0.25d | 2019-01-29 10:18 | 2019-01-29 13:18 |  | 125.42d | Analista-Diseñador |
| 135 | 1.2.2.3 | **Coordinación de requisitos relacionados** | 0.38d | 2019-01-29 13:18 | 2019-01-29 16:18 | 132 | 125.42d |  |
| 136 | 1.6.2.3.1 | Formar relaciones entre requisitos que tengan puntos comunes | 0.25d | 2019-01-29 13:18 | 2019-01-29 15:18 |  | 125.42d | Analista-Diseñador; Analista-Programador |
| 137 | 1.6.2.3.2 | Purgar relaciones redundantes | 0.12d | 2019-01-29 15:18 | 2019-01-29 16:18 | 136 | 125.42d | Analista-Diseñador; Analista-Programador |
| 138 | 1.2.3 | **Especificación de requisitos** | 0.75d | 2019-01-29 16:18 | 2019-01-30 14:18 | 128 | 125.42d |  |
| 139 | 1.2.3.1 | **Documento de especificación formal de requisitos** | 0.5d | 2019-01-29 16:18 | 2019-01-30 11:18 |  | 125.42d |  |
| 140 | 1.6.3.1.1 | Redactar documento de requisitos formal | 0.5d | 2019-01-29 16:18 | 2019-01-30 11:18 |  | 125.42d | Analista-Programador |
| 141 | 1.2.3.2 | **Revisión de documento de especificación formal** | 0.25d | 2019-01-30 11:18 | 2019-01-30 14:18 | 139 | 125.42d |  |
| 142 | 1.6.3.2.1 | Revisar documento de requisitos formal en busca de errores | 0.12d | 2019-01-30 11:18 | 2019-01-30 13:18 |  | 125.42d | Analista-Diseñador |
| 143 | 1.6.3.2.2 | Revisar documento de requisitos formal en busca de mejoras de formato y claridad | 0.12d | 2019-01-30 13:18 | 2019-01-30 14:18 | 142 | 125.42d | Analista-Diseñador |
| 144 | 1.2.4 | **Validación de requisitos** | 0.75d | 2019-01-30 14:18 | 2019-01-31 11:18 | 138 | 125.42d |  |
| 145 | 1.2.4.1 | **Reunión con cliente para validación de requisitos** | 0.25d | 2019-01-30 14:18 | 2019-01-30 16:18 |  | 125.42d |  |
| 146 | 1.6.4.1.1 | Redactar acta de reunión con el cliente y validar requisitos | 0.25d | 2019-01-30 14:18 | 2019-01-30 16:18 |  | 125.42d | Analista-Diseñador |
| 147 | 1.2.4.2 | **Corrección de especificación formal** | 0.25d | 2019-01-30 16:18 | 2019-01-31 09:18 | 145 | 125.42d |  |
| 148 | 1.6.4.2.1 | Ajustar los requisitos a partir de la validación realizada | 0.25d | 2019-01-30 16:18 | 2019-01-31 09:18 |  | 125.42d | Analista-Programador |
| 149 | 1.2.4.3 | **Validación de la especificación forma corregidsa** | 0.25d | 2019-01-31 09:18 | 2019-01-31 11:18 | 147 | 125.42d |  |
| 150 | 1.6.4.3.1 | Reunirse con el cliente para realizar la validación final de requisitos | 0.25d | 2019-01-31 09:18 | 2019-01-31 11:18 |  | 125.42d | Analista-Diseñador; Analista-Programador |
| 151 | 1.6.5 | Reunirse con el jefe para informar del progreso de la semana | 0.12d | 2019-01-31 11:18 | 2019-01-31 13:18 | 144 | 125.42d | Analista-Diseñador; Analista-Programador; Director de proyecto |

| ID | WBS | Task | Duration | Start | Finish | Predecessors | Total slack | Resources |
| --- | --- | --- | --- | --- | --- | --- | --- | --- |
| 152 | 1.3 | **Diseño del sistema software** | 24.88d | 2019-01-31 13:18 | 2019-03-07 11:18 | 121 | 125.42d |  |
| 153 | 1.7.1 | Control de riesgos y daños | 2d | 2019-01-31 13:18 | 2019-02-04 13:18 |  | 2412.92d | Director de proyecto [50%] |
| 154 | 1.3.1 | **Diseño funcional** | 6d | 2019-01-31 13:18 | 2019-02-08 13:18 |  | 125.42d |  |
| 155 | 1.3.1.1 | **Diseño módulo del camarero** | 1d | 2019-01-31 13:18 | 2019-02-01 13:18 |  | 125.42d |  |
| 156 | 1.7.2.1.1 | Realizar diseño del módulo | 1d | 2019-01-31 13:18 | 2019-02-01 13:18 |  | 125.42d | Analista-Diseñador; Analista-Programador |
| 157 | 1.3.1.2 | **Diseño módulo de gestión de proveedores** | 1d | 2019-02-01 13:18 | 2019-02-04 13:18 | 155 | 125.42d |  |
| 158 | 1.7.2.2.1 | Realizar diseño del módulo | 1d | 2019-02-01 13:18 | 2019-02-04 13:18 |  | 125.42d | Analista-Diseñador; Analista-Programador |
| 159 | 1.3.1.3 | **Diseño módulo de cocinas/barras** | 1d | 2019-02-04 13:18 | 2019-02-05 13:18 | 157 | 125.42d |  |
| 160 | 1.7.2.3.1 | Realizar diseño del módulo | 1d | 2019-02-04 13:18 | 2019-02-05 13:18 |  | 125.42d | Analista-Diseñador; Analista-Programador |
| 161 | 1.3.1.4 | **Diseño módulo para muestra de datos y comandas** | 1d | 2019-02-05 13:18 | 2019-02-06 13:18 | 159 | 125.42d |  |
| 162 | 1.7.2.4.1 | Realizar diseño del módulo | 1d | 2019-02-05 13:18 | 2019-02-06 13:18 |  | 125.42d | Analista-Diseñador; Analista-Programador |
| 163 | 1.3.1.5 | **Diseño módulo de entretenimiento** | 1d | 2019-02-06 13:18 | 2019-02-07 13:18 | 161 | 125.42d |  |
| 164 | 1.7.2.5.1 | Realizar diseño del módulo | 1d | 2019-02-06 13:18 | 2019-02-07 13:18 |  | 125.42d | Analista-Diseñador; Analista-Programador |
| 165 | 1.3.1.6 | **Diseño módulo de monitorización general del sistema** | 1d | 2019-02-07 13:18 | 2019-02-08 13:18 | 163 | 125.42d |  |
| 166 | 1.7.2.6.1 | Realizar diseño del módulo | 1d | 2019-02-07 13:18 | 2019-02-08 13:18 |  | 125.42d | Analista-Diseñador; Analista-Programador |
| 167 | 1.7.3 | Informar al jefe del progreso semanal | 0.12d | 2019-02-08 13:18 | 2019-02-08 14:18 | 154 | 2000.42d | Analista-Diseñador; Director de proyecto |
| 168 | 1.3.2 | **Diseño técnico** | 8.38d | 2019-02-08 13:18 | 2019-02-20 16:18 | 154 | 125.42d |  |
| 169 | 1.3.2.1 | **Selección de tecnologías** | 4.25d | 2019-02-08 13:18 | 2019-02-14 15:18 |  | 125.42d |  |
| 170 | 1.3.2.1.1 | **Base de datos a usar** | 1.5d | 2019-02-08 13:18 | 2019-02-12 08:18 |  | 125.42d |  |
| 171 | 1.7.4.1.1.1 | Comparar bases de datos disponibles | 1d | 2019-02-08 13:18 | 2019-02-11 13:18 |  | 125.42d | Analista-Programador |
| 172 | 1.7.4.1.1.2 | Elegir la opción que mejor se adapte al proyecto | 0.5d | 2019-02-11 13:18 | 2019-02-12 08:18 | 171 | 125.42d | Analista-Programador |
| 173 | 1.3.2.1.2 | **Sistema operativo y aplicaciones de las tablets** | 1.5d | 2019-02-12 08:18 | 2019-02-13 13:18 | 170 | 125.42d |  |
| 174 | 1.7.4.1.2.1 | Comparar los sistemas operativos disponibles | 1d | 2019-02-12 08:18 | 2019-02-13 08:18 |  | 125.42d | Analista-Programador |
| 175 | 1.7.4.1.2.2 | Elegir la opción que mejor se adapte al proyecto | 0.5d | 2019-02-13 08:18 | 2019-02-13 13:18 | 174 | 125.42d | Analista-Programador |

| ID | WBS | Task | Duration | Start | Finish | Predecessors | Total slack | Resources |
| --- | --- | --- | --- | --- | --- | --- | --- | --- |
| 176 | 1.3.2.1.3 | **Lenguaje de programación y consultas SQL** | 1.25d | 2019-02-13 13:18 | 2019-02-14 15:18 | 173 | 125.42d |  |
| 177 | 1.7.4.1.3.1 | Analizar que lenguaje de programación y consultas SQL se adapta mejor a nuestra BD elegida | 1.25d | 2019-02-13 13:18 | 2019-02-14 15:18 |  | 125.42d | Analista-Programador; Programador Junior1 |
| 178 | 1.7.4.1.3.2 | Analizar que lenguaje se adapta mejor a las necesidades de la empresa | 1.25d | 2019-02-13 13:18 | 2019-02-14 15:18 |  | 125.42d | Analista-Programador; Programador Junior1 |
| 179 | 1.3.2.1.4 | **Interfaces de comunicación e interoperación con otras aplicaciones** | 1d | 2019-02-08 13:18 | 2019-02-11 13:18 |  | 450.42d |  |
| 180 | 1.7.4.1.4.1 | Diseñar mediante diagramas y diseño informal las interfaces | 1d | 2019-02-08 13:18 | 2019-02-11 13:18 |  | 450.42d | Analista-Diseñador |
| 181 | 1.7.4.2 | Informar al jefe del progreso semanal | 0.12d | 2019-02-14 15:18 | 2019-02-14 16:18 | 169 | 125.42d | Analista-Diseñador; Director de proyecto |
| 182 | 1.3.2.2 | **Validación de tecnologías** | 4d | 2019-02-14 16:18 | 2019-02-20 16:18 | 181, 169 | 125.42d |  |
| 183 | 1.3.2.2.1 | **Diseño de pruebas de rendimiento de las tecnologías** | 2d | 2019-02-14 16:18 | 2019-02-18 16:18 |  | 125.42d |  |
| 184 | 1.7.4.3.1.1 | Diseñar las pruebas de rendimiento | 2d | 2019-02-14 16:18 | 2019-02-18 16:18 |  | 125.42d | Analista-Diseñador |
| 185 | 1.3.2.2.2 | **Diseño de pruebas de coste de las tecnologías** | 2d | 2019-02-18 16:18 | 2019-02-20 16:18 | 183 | 125.42d |  |
| 186 | 1.7.4.3.2.1 | Diseñar las pruebas de coste | 2d | 2019-02-18 16:18 | 2019-02-20 16:18 |  | 125.42d | Analista-Diseñador |
| 187 | 1.7.5 | Informar al jefe del progreso semanal | 0.12d | 2019-02-20 16:18 | 2019-02-21 08:18 | 168 | 1162.92d | Analista-Diseñador; Director de proyecto |
| 188 | 1.3.3 | **Diseño de pruebas** | 7.5d | 2019-02-20 16:18 | 2019-03-04 11:18 | 168 | 125.42d |  |
| 189 | 1.3.3.1 | **Diseño de pruebas de aceptación** | 3d | 2019-02-20 16:18 | 2019-02-25 16:18 |  | 425.42d |  |
| 190 | 1.3.3.1.1 | **Diseño de pruebas para los gerentes del local** | 1.5d | 2019-02-20 16:18 | 2019-02-22 11:18 |  | 425.42d |  |
| 191 | 1.7.6.1.1.1 | Redactar informe de los minimos que deben cubrir las pruebas | 0.5d | 2019-02-20 16:18 | 2019-02-21 11:18 |  | 425.42d | Analista-Diseñador |
| 192 | 1.7.6.1.1.2 | Diseñar las pruebas basandose en los informes | 1d | 2019-02-21 11:18 | 2019-02-22 11:18 | 191 | 425.42d | Analista-Diseñador |
| 193 | 1.3.3.1.2 | **Diseño de pruebas sobre el personal del local** | 1.5d | 2019-02-20 16:18 | 2019-02-22 11:18 |  | 125.42d |  |
| 194 | 1.7.6.1.2.1 | Redactar informe de los minimos que deben cubrir las pruebas | 0.5d | 2019-02-20 16:18 | 2019-02-21 11:18 |  | 125.42d | Analista-Programador |
| 195 | 1.7.6.1.2.2 | Diseñar las pruebas basandose en los informes | 1d | 2019-02-21 11:18 | 2019-02-22 11:18 | 194 | 125.42d | Analista-Programador |
| 196 | 1.3.3.1.3 | **Diseño de pruebas sobre los usuarios del local** | 1.5d | 2019-02-20 16:18 | 2019-02-22 11:18 |  | 575.42d |  |
| 197 | 1.7.6.1.3.1 | Redactar informe de los minimos que deben cubrir las pruebas | 0.5d | 2019-02-20 16:18 | 2019-02-21 11:18 |  | 575.42d | Programador Junior1; Programador Junior2 |
| 198 | 1.7.6.1.3.2 | Diseñar las pruebas basandose en los informes | 1d | 2019-02-21 11:18 | 2019-02-22 11:18 | 197 | 575.42d | Programador Junior1; Programador Junior2 |
| 199 | 1.3.3.1.4 | **Diseño de pruebas para los proveedores** | 1.5d | 2019-02-22 11:18 | 2019-02-25 16:18 | 190 | 425.42d |  |
| 200 | 1.7.6.1.4.1 | Redactar informe de los minimos que deben cubrir las pruebas | 0.5d | 2019-02-22 11:18 | 2019-02-22 16:18 |  | 425.42d | Analista-Diseñador |
| 201 | 1.7.6.1.4.2 | Diseñar las pruebas basandose en los informes | 1d | 2019-02-22 16:18 | 2019-02-25 16:18 | 200 | 425.42d | Analista-Diseñador |

| ID | WBS | Task | Duration | Start | Finish | Predecessors | Total slack | Resources |
| --- | --- | --- | --- | --- | --- | --- | --- | --- |
| 202 | 1.3.3.2 | **Diseño de pruebas del sistema** | 3d | 2019-02-22 11:18 | 2019-02-27 11:18 |  | 425.42d |  |
| 203 | 1.3.3.2.1 | **Diseño de pruebas para comunicación con PayPal** | 1.5d | 2019-02-22 11:18 | 2019-02-25 16:18 | 193 | 125.42d |  |
| 204 | 1.7.6.2.1.1 | Redactar informe de los minimos que deben cubrir las pruebas | 0.5d | 2019-02-22 11:18 | 2019-02-22 16:18 |  | 125.42d | Analista-Programador |
| 205 | 1.7.6.2.1.2 | Diseñar las pruebas basandose en los informes | 1d | 2019-02-22 16:18 | 2019-02-25 16:18 | 204 | 125.42d | Analista-Programador |
| 206 | 1.3.3.2.2 | **Diseño de pruebas para comunicación con terminales TPV** | 1.5d | 2019-02-22 11:18 | 2019-02-25 16:18 | 196 | 575.42d |  |
| 207 | 1.7.6.2.2.1 | Redactar informe de los minimos que deben cubrir las pruebas | 0.5d | 2019-02-22 11:18 | 2019-02-22 16:18 |  | 575.42d | Programador Junior1; Programador Junior2 |
| 208 | 1.7.6.2.2.2 | Diseñar las pruebas basandose en los informes | 1d | 2019-02-22 16:18 | 2019-02-25 16:18 | 207 | 575.42d | Programador Junior1; Programador Junior2 |
| 209 | 1.3.3.2.3 | **Diseño de pruebas para comunicación con tablets del local** | 1.5d | 2019-02-25 16:18 | 2019-02-27 11:18 | 199 | 425.42d |  |
| 210 | 1.7.6.2.3.1 | Redactar informe de los minimos que deben cubrir las pruebas | 0.5d | 2019-02-25 16:18 | 2019-02-26 11:18 |  | 425.42d | Analista-Diseñador |
| 211 | 1.7.6.2.3.2 | Diseñar las pruebas basandose en los informes | 1d | 2019-02-26 11:18 | 2019-02-27 11:18 | 210 | 425.42d | Analista-Diseñador |
| 212 | 1.3.3.3 | **Diseño de pruebas de integración** | 1.5d | 2019-02-25 16:18 | 2019-02-27 11:18 |  | 125.42d |  |
| 213 | 1.3.3.3.1 | **Diseño de pruebas para comunicación entre módulos** | 1.5d | 2019-02-25 16:18 | 2019-02-27 11:18 | 203 | 125.42d |  |
| 214 | 1.7.6.3.1.1 | Redactar informe de los minimos que deben cubrir las pruebas | 0.5d | 2019-02-25 16:18 | 2019-02-26 11:18 |  | 125.42d | Analista-Programador |
| 215 | 1.7.6.3.1.2 | Diseñar las pruebas basandose en los informes | 1d | 2019-02-26 11:18 | 2019-02-27 11:18 | 214 | 125.42d | Analista-Programador |
| 216 | 1.3.3.4 | **Diseño de pruebas de unidad** | 3d | 2019-02-27 11:18 | 2019-03-04 11:18 | 212 | 125.42d |  |
| 217 | 1.3.3.4.1 | **Diseño de pruebas de módulo de monitorización general del sistema** | 1.5d | 2019-02-27 11:18 | 2019-02-28 16:18 |  | 125.42d |  |
| 218 | 1.7.6.4.1.1 | Redactar informe de los minimos que deben cubrir las pruebas | 0.5d | 2019-02-27 11:18 | 2019-02-27 16:18 |  | 125.42d | Analista-Diseñador |
| 219 | 1.7.6.4.1.2 | Diseñar las pruebas basandose en los informes | 1d | 2019-02-27 16:18 | 2019-02-28 16:18 | 218 | 125.42d | Analista-Diseñador |
| 220 | 1.3.3.4.2 | **Diseño de pruebas de módulo de entretenimiento** | 1.5d | 2019-02-28 16:18 | 2019-03-04 11:18 | 217 | 125.42d |  |
| 221 | 1.7.6.4.2.1 | Redactar informe de los minimos que deben cubrir las pruebas | 0.5d | 2019-02-28 16:18 | 2019-03-01 11:18 |  | 125.42d | Analista-Diseñador |
| 222 | 1.7.6.4.2.2 | Diseñar las pruebas basandose en los informes | 1d | 2019-03-01 11:18 | 2019-03-04 11:18 | 221 | 125.42d | Analista-Diseñador |
| 223 | 1.3.3.4.3 | **Diseño de pruebas de módulo para muestra de datos y comandas** | 1.5d | 2019-02-27 11:18 | 2019-02-28 16:18 |  | 125.42d |  |
| 224 | 1.7.6.4.3.1 | Redactar informe de los minimos que deben cubrir las pruebas | 0.5d | 2019-02-27 11:18 | 2019-02-27 16:18 |  | 125.42d | Analista-Programador |
| 225 | 1.7.6.4.3.2 | Diseñar las pruebas basandose en los informes | 1d | 2019-02-27 16:18 | 2019-02-28 16:18 | 224 | 125.42d | Analista-Programador |

| ID | WBS | Task | Duration | Start | Finish | Predecessors | Total slack | Resources |
| --- | --- | --- | --- | --- | --- | --- | --- | --- |
| 226 | 1.3.3.4.4 | **Diseño de pruebas de módulo de gestión de proveedores** | 1.5d | 2019-02-28 16:18 | 2019-03-04 11:18 | 223 | 125.42d |  |
| 227 | 1.7.6.4.4.1 | Redactar informe de los minimos que deben cubrir las pruebas | 0.5d | 2019-02-28 16:18 | 2019-03-01 11:18 |  | 125.42d | Analista-Programador |
| 228 | 1.7.6.4.4.2 | Diseñar las pruebas basandose en los informes | 1d | 2019-03-01 11:18 | 2019-03-04 11:18 | 227 | 125.42d | Analista-Programador |
| 229 | 1.3.3.4.5 | **Diseño de pruebas de módulo del camarero** | 1.5d | 2019-02-27 11:18 | 2019-02-28 16:18 |  | 125.42d |  |
| 230 | 1.7.6.4.5.1 | Redactar informe de los minimos que deben cubrir las pruebas | 0.5d | 2019-02-27 11:18 | 2019-02-27 16:18 |  | 125.42d | Programador Junior1; Programador Junior2 |
| 231 | 1.7.6.4.5.2 | Diseñar las pruebas basandose en los informes | 1d | 2019-02-27 16:18 | 2019-02-28 16:18 | 230 | 125.42d | Programador Junior1; Programador Junior2 |
| 232 | 1.3.3.4.6 | **Diseño de pruebas del módulo de cocinas/barra** | 1.5d | 2019-02-28 16:18 | 2019-03-04 11:18 | 229 | 125.42d |  |
| 233 | 1.7.6.4.6.1 | Redactar informe de los minimos que deben cubrir las pruebas | 0.5d | 2019-02-28 16:18 | 2019-03-01 11:18 |  | 125.42d | Programador Junior1; Programador Junior2 |
| 234 | 1.7.6.4.6.2 | Diseñar las pruebas basandose en los informes | 1d | 2019-03-01 11:18 | 2019-03-04 11:18 | 233 | 125.42d | Programador Junior1; Programador Junior2 |
| 235 | 1.7.7 | Informar al jefe del progreso semanal | 0.12d | 2019-03-04 11:18 | 2019-03-04 13:18 | 188 | 412.92d | Analista-Diseñador; Director de proyecto |
| 236 | 1.3.4 | **Planificación** | 3d | 2019-03-04 11:18 | 2019-03-07 11:18 | 188 | 125.42d |  |
| 237 | 1.3.4.1 | **Revisión de la planificación** | 2.5d | 2019-03-04 11:18 | 2019-03-06 16:18 |  | 125.42d |  |
| 238 | 1.7.8.1.1 | Revisar que la planificación se ajuste al tiempo adecuado | 1.5d | 2019-03-04 11:18 | 2019-03-05 16:18 |  | 125.42d | Analista-Programador |
| 239 | 1.7.8.1.2 | Revisar que la planificación se ajuste adecuadamente a nuestros recursos | 1d | 2019-03-05 16:18 | 2019-03-06 16:18 | 238 | 125.42d | Analista-Programador |
| 240 | 1.3.4.2 | **Validación de la planificación** | 0.5d | 2019-03-06 16:18 | 2019-03-07 11:18 | 237 | 125.42d |  |
| 241 | 1.7.8.2.1 | Reunirse con el jefe para validar la planificación revisada, incluye informe semanal | 0.5d | 2019-03-06 16:18 | 2019-03-07 11:18 |  | 125.42d | Analista-Programador; Director de proyecto |
| 242 | 1.4 | **Codificación del sistema** | 21.19d | 2019-03-07 11:18 | 2019-04-05 13:48 | 152 | 125.42d |  |
| 243 | 1.8.1 | **Riesgos Codificación** | 1d | 2019-03-07 11:18 | 2019-03-08 11:18 |  | 125.42d |  |
| 244 | 1.8.1.1 | Control de riesgos y daños | 1d | 2019-03-07 11:18 | 2019-03-08 11:18 |  | 125.42d | Director de proyecto [50%] |
| 245 | 1.8.1.2 | Formación de empleados | 1d | 2019-03-07 11:18 | 2019-03-08 11:18 |  | 125.42d | Personal de empresa |
| 246 | 1.4.1 | **Ambiente de desarrollo** | 6.38d | 2019-03-08 11:18 | 2019-03-18 15:18 | 243 | 125.42d |  |
| 247 | 1.4.1.1 | **Instalación del entorno de trabajo** | 2.12d | 2019-03-08 11:18 | 2019-03-12 13:18 |  | 125.42d |  |
| 248 | 1.4.1.1.1 | **Selección de tecnologías** | 0.5d | 2019-03-08 11:18 | 2019-03-08 16:18 |  | 125.42d |  |
| 249 | 1.8.2.1.1.1 | Seleccionar las tecnologías basandose en la fase de análisis | 0.5d | 2019-03-08 11:18 | 2019-03-08 16:18 |  | 125.42d | Analista-Diseñador |

| ID | WBS | Task | Duration | Start | Finish | Predecessors | Total slack | Resources |
| --- | --- | --- | --- | --- | --- | --- | --- | --- |
| 250 | 1.4.1.1.2 | **Adquisición de tecnologías** | 0.5d | 2019-03-08 16:18 | 2019-03-11 11:18 | 248 | 125.42d |  |
| 251 | 1.8.2.1.2.1 | Realizar la compra de licencias de software de empresa | 0.5d | 2019-03-08 16:18 | 2019-03-11 11:18 |  | 125.42d | Director de proyecto |
| 252 | 1.8.2.1.2.2 | Comprar el hardware necesario | 0.5d | 2019-03-08 16:18 | 2019-03-11 11:18 |  | 125.42d | Analista-Programador |
| 253 | 1.4.1.1.3 | **Instalación en ordenadores locales** | 1d | 2019-03-11 11:18 | 2019-03-12 11:18 | 250 | 125.42d |  |
| 254 | 1.8.2.1.3.1 | Instalar el software adquirido en los ordenadores locales | 1d | 2019-03-11 11:18 | 2019-03-12 11:18 |  | 125.42d | Analista-Programador |
| 255 | 1.8.2.1.4 | Informar al jefe del progreso semanal | 0.12d | 2019-03-12 11:18 | 2019-03-12 13:18 | 253 | 125.42d | Analista-Programador; Director de proyecto |
| 256 | 1.4.1.2 | **Configuración del entorno de trabajo** | 2d | 2019-03-12 13:18 | 2019-03-14 13:18 | 247 | 125.42d |  |
| 257 | 1.4.1.2.1 | **Ajuste de propiedades generales** | 2d | 2019-03-12 13:18 | 2019-03-14 13:18 |  | 125.42d |  |
| 258 | 1.8.2.2.1.1 | Configurar el SO y programas básico de uso general | 2d | 2019-03-12 13:18 | 2019-03-14 13:18 |  | 125.42d | Director de proyecto |
| 259 | 1.4.1.2.2 | **Ajuste de propiedades específicas** | 2d | 2019-03-12 13:18 | 2019-03-14 13:18 |  | 125.42d |  |
| 260 | 1.8.2.2.2.1 | Preparar el software específico en los equipos de personal especializado | 2d | 2019-03-12 13:18 | 2019-03-14 13:18 |  | 125.42d | Programador Junior1; Programador Junior2 |
| 261 | 1.4.1.3 | **Revisiones de eficiencia y velocidad del entorno** | 2.25d | 2019-03-14 13:18 | 2019-03-18 15:18 | 256 | 125.42d |  |
| 262 | 1.4.1.3.1 | **Evaluación de eficiencia y velocidad** | 1d | 2019-03-14 13:18 | 2019-03-15 13:18 |  | 125.42d |  |
| 263 | 1.8.2.3.1.1 | Realizar evaluación de eficiencia y velocidad durante la preparación de los ordenadores | 1d | 2019-03-14 13:18 | 2019-03-15 13:18 |  | 125.42d | Programador Junior1 |
| 264 | 1.4.1.3.2 | **Reconfiguración de tecnologías o herramientas** | 1d | 2019-03-15 13:18 | 2019-03-18 13:18 | 262 | 125.42d |  |
| 265 | 1.8.2.3.2.1 | Ajustar las configuraciones iniciales basándose en las evaluaciones | 1d | 2019-03-15 13:18 | 2019-03-18 13:18 |  | 125.42d | Programador Junior2 |
| 266 | 1.4.1.3.3 | **Selección parcial de otras herramientas** | 0.25d | 2019-03-18 13:18 | 2019-03-18 15:18 | 264 | 125.42d |  |
| 267 | 1.8.2.3.3.1 | Cubrir problemas encontrados con las herramientas de terceros necesarias | 0.25d | 2019-03-18 13:18 | 2019-03-18 15:18 |  | 125.42d | Programador Junior1; Programador Junior2 |
| 268 | 1.4.2 | **Módulos** | 9.62d | 2019-03-18 15:18 | 2019-04-01 11:18 | 246 | 125.42d |  |
| 269 | 1.8.3.1 | Informar al jefe del progreso semanal | 0.12d | 2019-03-18 15:18 | 2019-03-18 16:18 |  | 237.92d | Analista-Programador; Director de proyecto |
| 270 | 1.4.2.1 | **Módulo del camarero** | 2.5d | 2019-03-18 15:18 | 2019-03-21 10:18 |  | 837.92d |  |
| 271 | 1.4.2.1.1 | **Almacén de datos de camareros** | 2.5d | 2019-03-18 15:18 | 2019-03-21 10:18 |  | 125.42d |  |
| 272 | 1.8.3.2.1.1 | Preparar la BD y funciones para uso de camareros | 2.5d | 2019-03-18 15:18 | 2019-03-21 10:18 |  | 125.42d | Programador Senior |
| 273 | 1.4.2.1.2 | **Función de comunicar llamadas al camarero** | 1d | 2019-03-18 15:18 | 2019-03-19 15:18 |  | 987.92d |  |
| 274 | 1.8.3.2.2.1 | Implementar la función de llamadas al camararero mediante la interfaz diseñada | 1d | 2019-03-18 15:18 | 2019-03-19 15:18 |  | 987.92d | Programador Junior1 |

| ID | WBS | Task | Duration | Start | Finish | Predecessors | Total slack | Resources |
| --- | --- | --- | --- | --- | --- | --- | --- | --- |
| 275 | 1.4.2.1.3 | **Función de liberar una mesa ocupada** | 1d | 2019-03-18 15:18 | 2019-03-19 15:18 |  | 987.92d |  |
| 276 | 1.8.3.2.3.1 | Implementar la función que permite liberar mesas a camareros | 1d | 2019-03-18 15:18 | 2019-03-19 15:18 |  | 987.92d | Programador Junior2 |
| 277 | 1.4.2.1.4 | **Interfaz visual agradable** | 0.5d | 2019-03-18 15:18 | 2019-03-19 10:18 |  | 1037.92d |  |
| 278 | 1.8.3.2.4.1 | Programar la interfaz visual | 0.5d | 2019-03-18 15:18 | 2019-03-19 10:18 |  | 1037.92d | Analista-Diseñador; Analista-Programador |
| 279 | 1.4.2.2 | **Módulo de gestión de proveedores** | 3.5d | 2019-03-18 15:18 | 2019-03-22 10:18 |  | 125.42d |  |
| 280 | 1.4.2.2.1 | **Almacén de stock** | 1d | 2019-03-21 10:18 | 2019-03-22 10:18 | 271 | 125.42d |  |
| 281 | 1.8.3.3.1.1 | Programar el gestor de stock y conectarlo a la BD | 1d | 2019-03-21 10:18 | 2019-03-22 10:18 |  | 125.42d | Programador Senior |
| 282 | 1.4.2.2.2 | **Interfaz visual agradable** | 0.5d | 2019-03-18 15:18 | 2019-03-19 10:18 |  | 425.42d |  |
| 283 | 1.8.3.3.2.1 | Programar la interfaz visual | 0.5d | 2019-03-18 15:18 | 2019-03-19 10:18 |  | 425.42d | Analista-Diseñador; Analista-Programador |
| 284 | 1.4.2.3 | **Módulo de cocinas/barra** | 2.25d | 2019-03-18 16:18 | 2019-03-21 09:18 | 269 | 237.92d |  |
| 285 | 1.4.2.3.1 | **Función de cobrar con tarjeta u otros métodos** | 2d | 2019-03-18 16:18 | 2019-03-20 16:18 |  | 262.92d |  |
| 286 | 1.8.3.4.1.1 | Programar funciones de cobro | 1.5d | 2019-03-18 16:18 | 2019-03-20 11:18 |  | 262.92d | Programador Junior1 |
| 287 | 1.8.3.4.1.2 | Adaptar funciones de cobro a todos los métodos de pago | 0.5d | 2019-03-20 11:18 | 2019-03-20 16:18 | 286 | 262.92d | Programador Junior1 |
| 288 | 1.4.2.3.2 | **Función de proteger los datos de las transacciones** | 1.5d | 2019-03-18 16:18 | 2019-03-20 11:18 |  | 312.92d |  |
| 289 | 1.8.3.4.2.1 | Asegurarse de que se guardan apropiadamente los datos | 0.5d | 2019-03-18 16:18 | 2019-03-19 11:18 |  | 312.92d | Programador Junior2 |
| 290 | 1.8.3.4.2.2 | Proteger mediante encriptación o restricciones de acceso los datos | 1d | 2019-03-19 11:18 | 2019-03-20 11:18 | 289 | 312.92d | Programador Junior2 |
| 291 | 1.4.2.3.3 | **Almacén de datos de comandas** | 2d | 2019-03-18 16:18 | 2019-03-20 16:18 |  | 237.92d |  |
| 292 | 1.8.3.4.3.1 | Programar el almacen de datos de pedidos | 2d | 2019-03-18 16:18 | 2019-03-20 16:18 |  | 237.92d | Programador Junior1; Programador Junior2 |
| 293 | 1.4.2.3.4 | **Almacén de datos de mesas** | 0.25d | 2019-03-20 16:18 | 2019-03-21 09:18 | 291 | 237.92d |  |
| 294 | 1.8.3.4.4.1 | Adaptar el almacén de datos de pedidos a las mesas | 0.25d | 2019-03-20 16:18 | 2019-03-21 09:18 | 292 | 237.92d | Programador Junior1; Programador Junior2 |
| 295 | 1.4.2.4 | **Módulo para muestra de datos y comandas** | 3d | 2019-03-22 10:18 | 2019-03-27 10:18 | 279, 284 | 125.42d |  |
| 296 | 1.4.2.4.1 | **Función de seleccionar productos y pedidos** | 2d | 2019-03-22 10:18 | 2019-03-26 10:18 |  | 125.42d |  |
| 297 | 1.8.3.5.1.1 | Implementar navegación de menú | 2d | 2019-03-22 10:18 | 2019-03-26 10:18 |  | 125.42d | Programador Senior |
| 298 | 1.4.2.4.2 | **Función de plasmar información del pedido** | 1d | 2019-03-22 10:18 | 2019-03-25 10:18 |  | 175.42d |  |
| 299 | 1.8.3.5.2.1 | Implementar función de información de pedido | 1d | 2019-03-22 10:18 | 2019-03-25 10:18 |  | 175.42d | Programador Junior1 |

| ID | WBS | Task | Duration | Start | Finish | Predecessors | Total slack | Resources |
| --- | --- | --- | --- | --- | --- | --- | --- | --- |
| 300 | 1.4.2.4.3 | **Función de enviar la comanda** | 1d | 2019-03-22 10:18 | 2019-03-25 10:18 |  | 300.42d |  |
| 301 | 1.8.3.5.3.1 | Imlementar función de envio de comanda | 1d | 2019-03-22 10:18 | 2019-03-25 10:18 |  | 300.42d | Programador Junior2 |
| 302 | 1.4.2.4.4 | **Función de reservar mesa libre** | 1d | 2019-03-22 10:18 | 2019-03-25 10:18 |  | 325.42d |  |
| 303 | 1.8.3.5.4.1 | Implementar función de reserva | 1d | 2019-03-22 10:18 | 2019-03-25 10:18 |  | 325.42d | Analista-Programador |
| 304 | 1.4.2.4.5 | **Función de ver estado de la mesa** | 1d | 2019-03-26 10:18 | 2019-03-27 10:18 |  | 125.42d |  |
| 305 | 1.8.3.5.5.1 | Implementar función de estado | 1d | 2019-03-26 10:18 | 2019-03-27 10:18 | 297 | 125.42d | Programador Senior |
| 306 | 1.4.2.4.6 | **Función de informar al cliente** | 1.5d | 2019-03-25 10:18 | 2019-03-26 15:18 |  | 175.42d |  |
| 307 | 1.8.3.5.6.1 | Adaptar función de comunicación para el cliente | 1.5d | 2019-03-25 10:18 | 2019-03-26 15:18 | 299 | 175.42d | Programador Junior1 |
| 308 | 1.4.2.4.7 | **Función de códigos QR** | 0.25d | 2019-03-25 10:18 | 2019-03-25 13:18 |  | 300.42d |  |
| 309 | 1.8.3.5.7.1 | Adaptar el lector QR a nuestros programas | 0.25d | 2019-03-25 10:18 | 2019-03-25 13:18 | 301 | 300.42d | Programador Junior2 |
| 310 | 1.4.2.4.8 | **Interfaz visual agradable** | 0.25d | 2019-03-22 10:18 | 2019-03-22 13:18 |  | 400.42d |  |
| 311 | 1.8.3.5.8.1 | Programar la interfaz visual | 0.25d | 2019-03-22 10:18 | 2019-03-22 13:18 |  | 400.42d | Analista-Diseñador; Analista-Programador |
| 312 | 1.8.3.6 | Informar al jefe de progreso semanal | 0.12d | 2019-03-27 10:18 | 2019-03-27 11:18 | 295 | 125.42d | Analista-Programador; Director de proyecto |
| 313 | 1.4.2.5 | **Módulo de entretenimiento** | 2d | 2019-03-27 11:18 | 2019-03-29 11:18 | 312 | 125.42d |  |
| 314 | 1.4.2.5.1 | **Función de ofrecer entretenimiento al cliente** | 0.12d | 2019-03-27 11:18 | 2019-03-27 13:18 |  | 162.92d |  |
| 315 | 1.8.3.7.1.1 | Asegurar que los programas adecuados están instalados y son accesibles | 0.12d | 2019-03-27 11:18 | 2019-03-27 13:18 |  | 162.92d | Programador Junior1 |
| 316 | 1.4.2.5.2 | **Función de interactuar con el local** | 2d | 2019-03-27 11:18 | 2019-03-29 11:18 |  | 125.42d |  |
| 317 | 1.8.3.7.2.1 | Preparar conexiones visuales de camaras | 0.5d | 2019-03-27 13:18 | 2019-03-28 08:18 | 315 | 162.92d | Programador Junior1 |
| 318 | 1.8.3.7.2.2 | Preparar lista de música | 0.06d | 2019-03-27 11:18 | 2019-03-27 11:48 |  | 219.17d | Programador Junior2 |
| 319 | 1.8.3.7.2.3 | Preparar programa de control de interacción | 1d | 2019-03-27 11:18 | 2019-03-28 11:18 |  | 125.42d | Analista-Programador |
| 320 | 1.8.3.7.2.4 | Completar programa de control de interacción con los módulos | 1d | 2019-03-28 11:18 | 2019-03-29 11:18 | 319, 318, 317 | 125.42d | Programador Senior |
| 321 | 1.4.2.5.3 | **Interfaz visual agradable** | 0.5d | 2019-03-27 11:18 | 2019-03-27 16:18 |  | 275.42d |  |
| 322 | 1.8.3.7.3.1 | Programar interfaz visual | 0.5d | 2019-03-27 11:18 | 2019-03-27 16:18 |  | 275.42d | Analista-Diseñador; Analista-Programador |
| 323 | 1.4.2.6 | **Módulo de monitorización general y gerencia** | 1d | 2019-03-29 11:18 | 2019-04-01 11:18 | 313 | 125.42d |  |
| 324 | 1.4.2.6.1 | **Almacén de datos legales** | 1d | 2019-03-29 11:18 | 2019-04-01 11:18 |  | 125.42d |  |
| 325 | 1.8.3.8.1.1 | Preparar BD y gestión de BD | 1d | 2019-03-29 11:18 | 2019-04-01 11:18 |  | 125.42d | Programador Junior1 |
| 326 | 1.8.3.8.1.2 | Revisar cumplimiento de requerimientos legales de la BD | 0.25d | 2019-03-29 11:18 | 2019-03-29 14:18 |  | 200.42d | Programador Senior |

| ID | WBS | Task | Duration | Start | Finish | Predecessors | Total slack | Resources |
| --- | --- | --- | --- | --- | --- | --- | --- | --- |
| 327 | 1.4.2.6.2 | **Almacén de nóminas** | 1d | 2019-03-29 11:18 | 2019-04-01 11:18 |  | 125.42d |  |
| 328 | 1.8.3.8.2.1 | Preparar BD y gestión de BD para nóminas | 1d | 2019-03-29 11:18 | 2019-04-01 11:18 |  | 125.42d | Programador Junior2 |
| 329 | 1.8.3.8.2.2 | Automatizar las nóminas y su almacenamiento de datos | 1d | 2019-03-29 11:18 | 2019-04-01 11:18 |  | 125.42d | Analista-Programador |
| 330 | 1.4.2.6.3 | **Interfaz visual agrdable** | 0.5d | 2019-03-29 11:18 | 2019-03-29 16:18 |  | 175.42d |  |
| 331 | 1.8.3.8.3.1 | Programar la interfaz visual | 0.5d | 2019-03-29 11:18 | 2019-03-29 16:18 |  | 175.42d | Analista-Diseñador; Analista-Programador |
| 332 | 1.4.3 | **Depuración** | 4.19d | 2019-04-01 11:18 | 2019-04-05 13:48 | 268 | 125.42d |  |
| 333 | 1.8.4.1 | Informar al jefe del progreso semanal | 0.12d | 2019-04-01 11:18 | 2019-04-01 13:18 |  | 531.67d | Analista-Programador; Director de proyecto |
| 334 | 1.4.3.1 | **Localización de defectos** | 0.69d | 2019-04-01 11:18 | 2019-04-02 08:48 |  | 125.42d |  |
| 335 | 1.4.3.1.1 | **Listado de defectos** | 0.5d | 2019-04-01 11:18 | 2019-04-01 16:18 |  | 125.42d |  |
| 336 | 1.8.4.2.1.1 | Realizar un listado intensivo de defectos encontrados en la codificación | 0.5d | 2019-04-01 11:18 | 2019-04-01 16:18 |  | 125.42d | Programador Senior |
| 337 | 1.4.3.1.2 | **Ubicación de defectos** | 0.19d | 2019-04-01 16:18 | 2019-04-02 08:48 | 335 | 125.42d |  |
| 338 | 1.8.4.2.2.1 | Completar listado con posiciones exactas (linea, programa, módulo, etc) de los errores | 0.06d | 2019-04-01 16:18 | 2019-04-01 16:48 |  | 125.42d | Programador Senior |
| 339 | 1.8.4.2.2.2 | Incluir en listado posibles relaciones del error con otro módulo o trozo de código | 0.12d | 2019-04-01 16:48 | 2019-04-02 08:48 | 338 | 125.42d | Programador Senior |
| 340 | 1.4.3.2 | **Corrección de defectos** | 3.5d | 2019-04-02 08:48 | 2019-04-05 13:48 | 334 | 125.42d |  |
| 341 | 1.4.3.2.1 | **Modificaciones necesarias** | 2.5d | 2019-04-02 08:48 | 2019-04-04 13:48 |  | 125.42d |  |
| 342 | 1.8.4.3.1.1 | Implementar las modificaciones y arreglos de la codificación | 2.5d | 2019-04-02 08:48 | 2019-04-04 13:48 |  | 125.42d | Analista-Programador; Programador Junior1; Programador Junior2; Programador Senior |
| 343 | 1.4.3.2.2 | **Revisión de corrección del defecto** | 1d | 2019-04-04 13:48 | 2019-04-05 13:48 | 341 | 125.42d |  |
| 344 | 1.8.4.3.2.1 | Revisar todos los errores del listado para comprobar que han sido arreglados correctamente | 1d | 2019-04-04 13:48 | 2019-04-05 13:48 |  | 125.42d | Programador Senior |
| 345 | 1.5 | **Pruebas del sistema y sus componentes** | 16.15d | 2019-04-05 13:48 | 2019-04-29 14:58 | 242 | 125.42d |  |
| 346 | 1.9.1 | Control de riesgos y daños | 1d | 2019-04-05 13:48 | 2019-04-08 13:48 |  | 125.42d | Director de proyecto [50%] |
| 347 | 1.9.2 | Informar al jefe del progreso semanal | 0.12d | 2019-04-08 13:48 | 2019-04-08 14:48 | 346 | 125.42d | Analista-Diseñador; Analista-Programador; Director de proyecto |
| 348 | 1.5.1 | **Planificación de pruebas** | 2.5d | 2019-04-08 14:48 | 2019-04-11 09:48 | 347 | 125.42d |  |
| 349 | 1.5.1.1 | **Pruebas de aceptación** | 0.5d | 2019-04-08 14:48 | 2019-04-09 09:48 |  | 125.42d |  |
| 350 | 1.5.1.1.1 | **Pruebas para los gerentes de local** | 0.5d | 2019-04-08 14:48 | 2019-04-09 09:48 |  | 125.42d |  |
| 351 | 1.9.3.1.1.1 | Planear las pruebas basándose en su diseño | 0.5d | 2019-04-08 14:48 | 2019-04-09 09:48 |  | 125.42d | Programador Junior1 |

| ID | WBS | Task | Duration | Start | Finish | Predecessors | Total slack | Resources |
| --- | --- | --- | --- | --- | --- | --- | --- | --- |
| 352 | 1.5.1.1.2 | **Pruebas sobre el personal de local** | 0.5d | 2019-04-08 14:48 | 2019-04-09 09:48 |  | 125.42d |  |
| 353 | 1.9.3.1.2.1 | Planear las pruebas basándose en su diseño | 0.5d | 2019-04-08 14:48 | 2019-04-09 09:48 |  | 125.42d | Programador Junior2 |
| 354 | 1.5.1.1.3 | **Pruebas sobre los usuarios del local** | 0.5d | 2019-04-08 14:48 | 2019-04-09 09:48 |  | 125.42d |  |
| 355 | 1.9.3.1.3.1 | Planear las pruebas basándose en su diseño | 0.5d | 2019-04-08 14:48 | 2019-04-09 09:48 |  | 125.42d | Programador Senior |
| 356 | 1.5.1.1.4 | **Pruebas para los proveedores** | 0.5d | 2019-04-08 14:48 | 2019-04-09 09:48 |  | 125.42d |  |
| 357 | 1.9.3.1.4.1 | Planear las pruebas basándose en su diseño | 0.5d | 2019-04-08 14:48 | 2019-04-09 09:48 |  | 125.42d | Analista-Diseñador |
| 358 | 1.5.1.2 | **Pruebas del sistema** | 0.5d | 2019-04-09 09:48 | 2019-04-09 14:48 | 349 | 125.42d |  |
| 359 | 1.5.1.2.1 | **Pruebas para comunicación con PayPal** | 0.5d | 2019-04-09 09:48 | 2019-04-09 14:48 |  | 125.42d |  |
| 360 | 1.9.3.2.1.1 | Planear las pruebas basándose en su diseño | 0.5d | 2019-04-09 09:48 | 2019-04-09 14:48 |  | 125.42d | Programador Junior1 |
| 361 | 1.5.1.2.2 | **Pruebas para comunicación con terminales TPV** | 0.5d | 2019-04-09 09:48 | 2019-04-09 14:48 |  | 125.42d |  |
| 362 | 1.9.3.2.2.1 | Planear las pruebas basándose en su diseño | 0.5d | 2019-04-09 09:48 | 2019-04-09 14:48 |  | 125.42d | Programador Junior2 |
| 363 | 1.5.1.2.3 | **Pruebas para comunicación con tablets de local** | 0.5d | 2019-04-09 09:48 | 2019-04-09 14:48 |  | 125.42d |  |
| 364 | 1.9.3.2.3.1 | Planear las pruebas basándose en su diseño | 0.5d | 2019-04-09 09:48 | 2019-04-09 14:48 |  | 125.42d | Programador Senior |
| 365 | 1.5.1.3 | **Pruebas de integración** | 0.5d | 2019-04-09 14:48 | 2019-04-10 09:48 | 358 | 125.42d |  |
| 366 | 1.5.1.3.1 | **Pruebas para comunicación entre módulos** | 0.5d | 2019-04-09 14:48 | 2019-04-10 09:48 |  | 125.42d |  |
| 367 | 1.9.3.3.1.1 | Planear las pruebas basándose en su diseño | 0.5d | 2019-04-09 14:48 | 2019-04-10 09:48 |  | 125.42d | Programador Senior |
| 368 | 1.5.1.4 | **Pruebas de unidad** | 1d | 2019-04-10 09:48 | 2019-04-11 09:48 | 365 | 125.42d |  |
| 369 | 1.5.1.4.1 | **Pruebas de módulo de monitorización general del sistema** | 0.5d | 2019-04-10 09:48 | 2019-04-10 14:48 |  | 125.42d |  |
| 370 | 1.9.3.4.1.1 | Planear las pruebas basándose en su diseño | 0.5d | 2019-04-10 09:48 | 2019-04-10 14:48 |  | 125.42d | Programador Junior1 |
| 371 | 1.5.1.4.2 | **Pruebas de módulo de entretenimiento** | 0.5d | 2019-04-10 09:48 | 2019-04-10 14:48 |  | 125.42d |  |
| 372 | 1.9.3.4.2.1 | Planear las pruebas basándose en su diseño | 0.5d | 2019-04-10 09:48 | 2019-04-10 14:48 |  | 125.42d | Programador Junior2 |
| 373 | 1.5.1.4.3 | **Pruebas de módulo para muestra de datos y comandas** | 0.5d | 2019-04-10 09:48 | 2019-04-10 14:48 |  | 125.42d |  |
| 374 | 1.9.3.4.3.1 | Planear las pruebas basándose en su diseño | 0.5d | 2019-04-10 09:48 | 2019-04-10 14:48 |  | 125.42d | Programador Senior |
| 375 | 1.5.1.4.4 | **Pruebas de módulo de gestión de proveedores** | 0.5d | 2019-04-10 14:48 | 2019-04-11 09:48 | 369 | 125.42d |  |
| 376 | 1.9.3.4.4.1 | Planear las pruebas basándose en su diseño | 0.5d | 2019-04-10 14:48 | 2019-04-11 09:48 |  | 125.42d | Programador Junior1 |

| ID | WBS | Task | Duration | Start | Finish | Predecessors | Total slack | Resources |
| --- | --- | --- | --- | --- | --- | --- | --- | --- |
| 377 | 1.5.1.4.5 | **Pruebas de módulo del camarero** | 0.5d | 2019-04-10 14:48 | 2019-04-11 09:48 | 371 | 125.42d |  |
| 378 | 1.9.3.4.5.1 | Planear las pruebas basándose en su diseño | 0.5d | 2019-04-10 14:48 | 2019-04-11 09:48 |  | 125.42d | Programador Junior2 |
| 379 | 1.5.1.4.6 | **Pruebas del módulo de cocinas/barra** | 0.5d | 2019-04-10 14:48 | 2019-04-11 09:48 | 373 | 125.42d |  |
| 380 | 1.9.3.4.6.1 | Planear las pruebas basándose en su diseño | 0.5d | 2019-04-10 14:48 | 2019-04-11 09:48 |  | 125.42d | Programador Senior |
| 381 | 1.5.2 | **Ejecución de pruebas** | 10d | 2019-04-11 09:48 | 2019-04-25 09:48 | 348 | 125.42d |  |
| 382 | 1.5.2.1 | **Ejecución de casos de prueba** | 3d | 2019-04-11 09:48 | 2019-04-16 09:48 |  | 125.42d |  |
| 383 | 1.5.2.1.1 | **Ejecución de conjunto de casos de unidad** | 2d | 2019-04-11 09:48 | 2019-04-15 09:48 |  | 225.42d |  |
| 384 | 1.9.4.1.1.1 | Dividir los equipos para ejecutar las pruebas de cada unidad | 0.5d | 2019-04-11 09:48 | 2019-04-11 14:48 |  | 125.42d | Programador Senior |
| 385 | 1.9.4.1.1.2 | Ejecutar las pruebas de cada módulo individual | 2d | 2019-04-11 09:48 | 2019-04-15 09:48 |  | 225.42d | Analista-Programador |
| 386 | 1.5.2.1.2 | **Ejecución de conjunto de casos de integración** | 2.5d | 2019-04-11 09:48 | 2019-04-15 14:48 |  | 175.42d |  |
| 387 | 1.9.4.1.2.1 | Ejecutar las pruebas para comprobar que la integración de módulos no tiene fallos | 2.5d | 2019-04-11 09:48 | 2019-04-15 14:48 |  | 175.42d | Programador Junior1 |
| 388 | 1.5.2.1.3 | **Ejecución de conjunto de casos de sistema** | 2.5d | 2019-04-11 09:48 | 2019-04-15 14:48 |  | 175.42d |  |
| 389 | 1.9.4.1.3.1 | Ejecutar las pruebas de sistema | 2.5d | 2019-04-11 09:48 | 2019-04-15 14:48 |  | 175.42d | Programador Junior2 |
| 390 | 1.9.4.1.4 | Informar al jefe del progreso semanal | 0.12d | 2019-04-11 09:48 | 2019-04-11 10:48 |  | 412.92d | Analista-Programador; Director de proyecto |
| 391 | 1.5.2.1.4 | **Ejecución de conjunto de casos de validación** | 2.5d | 2019-04-11 14:48 | 2019-04-16 09:48 |  | 125.42d |  |
| 392 | 1.9.4.1.5.1 | Ejecutar las pruebas de validación del programa | 2.5d | 2019-04-11 14:48 | 2019-04-16 09:48 | 384 | 125.42d | Programador Senior |
| 393 | 1.5.2.2 | **Listado de errores** | 2.5d | 2019-04-16 09:48 | 2019-04-18 14:48 | 382 | 125.42d |  |
| 394 | 1.5.2.2.1 | **Enumeración de errores graves** | 2d | 2019-04-16 09:48 | 2019-04-18 09:48 |  | 125.42d |  |
| 395 | 1.9.4.2.1.1 | Crear un listado con los errores que se consideran más graves | 0.5d | 2019-04-16 09:48 | 2019-04-16 14:48 |  | 125.42d | Analista-Programador |
| 396 | 1.9.4.2.1.2 | Analizar cuales de los errores son tan graves como se estima y cuales pueden desestimarse | 1.5d | 2019-04-16 14:48 | 2019-04-18 09:48 | 395 | 125.42d | Analista-Programador |
| 397 | 1.5.2.2.2 | **Desestimación de errores leves o de otro tipo** | 0.5d | 2019-04-18 09:48 | 2019-04-18 14:48 |  | 125.42d |  |
| 398 | 1.9.4.2.2.1 | Analizar los errores leves para observar que alguna combinación de estos no cause problemas graves | 0.5d | 2019-04-18 09:48 | 2019-04-18 14:48 | 396 | 125.42d | Programador Senior |
| 399 | 1.9.4.2.3 | Informar al jefe del progreso semanal | 0.12d | 2019-04-16 09:48 | 2019-04-16 10:48 |  | 362.92d | Director de proyecto; Programador Senior |
| 400 | 1.5.2.3 | **Corrección de errores** | 2.5d | 2019-04-18 14:48 | 2019-04-23 09:48 | 393 | 125.42d |  |
| 401 | 1.5.2.3.1 | **Depuración de errores** | 2d | 2019-04-18 14:48 | 2019-04-22 14:48 |  | 125.42d |  |
| 402 | 1.9.4.3.1.1 | Arreglar todos los errores graves | 2d | 2019-04-18 14:48 | 2019-04-22 14:48 |  | 125.42d | Programador Senior |
| 403 | 1.9.4.3.1.2 | Arreglar los errores leves que causen errores graves como conjunto | 2d | 2019-04-18 14:48 | 2019-04-22 14:48 |  | 125.42d | Programador Junior1; Programador Junior2 |

| ID | WBS | Task | Duration | Start | Finish | Predecessors | Total slack | Resources |
| --- | --- | --- | --- | --- | --- | --- | --- | --- |
| 404 | 1.5.2.3.2 | **Verificación de corrección** | 0.5d | 2019-04-22 14:48 | 2019-04-23 09:48 | 401 | 125.42d |  |
| 405 | 1.9.4.3.2.1 | Comprobar que las correcciones han sido realizadas sin causar mas errores | 0.5d | 2019-04-22 14:48 | 2019-04-23 09:48 |  | 125.42d | Analista-Programador |
| 406 | 1.5.2.4 | **Verificación de terminación** | 2d | 2019-04-23 09:48 | 2019-04-25 09:48 | 400 | 125.42d |  |
| 407 | 1.5.2.4.1 | **Revisión de listado de errores** | 1.5d | 2019-04-23 09:48 | 2019-04-24 14:48 |  | 125.42d |  |
| 408 | 1.9.4.4.1.1 | Revisar el listado de errores e informe de correcciones | 1.5d | 2019-04-23 09:48 | 2019-04-24 14:48 |  | 125.42d | Analista-Programador |
| 409 | 1.5.2.4.2 | **Aprobación formal de finalización** | 0.5d | 2019-04-24 14:48 | 2019-04-25 09:48 | 407 | 125.42d |  |
| 410 | 1.9.4.4.2.1 | Reunirse con el encargado para formalizar la validación e informar del progreso semanal | 0.5d | 2019-04-24 14:48 | 2019-04-25 09:48 |  | 125.42d | Analista-Programador; Director de proyecto |
| 411 | 1.5.3 | **Análisis de errores y evaluación** | 2.52d | 2019-04-25 09:48 | 2019-04-29 14:58 | 381 | 125.42d |  |
| 412 | 1.5.3.1 | **Creación de documento de errores** | 1d | 2019-04-25 09:48 | 2019-04-26 09:48 |  | 125.42d |  |
| 413 | 1.9.5.1.1 | Redactar documento de errores | 1d | 2019-04-25 09:48 | 2019-04-26 09:48 |  | 125.42d | Analista-Programador |
| 414 | 1.5.3.2 | **Catalogación de errores** | 1d | 2019-04-25 09:48 | 2019-04-26 09:48 |  | 125.42d |  |
| 415 | 1.9.5.2.1 | Catalogar errores basandose en el análisis realizado en la ejecución de pruebas | 1d | 2019-04-25 09:48 | 2019-04-26 09:48 | 397, 394 | 125.42d | Analista-Programador |
| 416 | 1.5.3.3 | **Realización de análisis estadísticos** | 1.5d | 2019-04-26 09:48 | 2019-04-29 14:48 | 414, 412 | 125.42d |  |
| 417 | 1.9.5.3.1 | Realizar análisis estadístico de errores | 1d | 2019-04-26 09:48 | 2019-04-29 09:48 |  | 125.42d | Analista-Diseñador; Analista-Programador |
| 418 | 1.9.5.3.2 | Redactar informe estadístico | 0.5d | 2019-04-29 09:48 | 2019-04-29 14:48 | 417 | 125.42d | Analista-Diseñador; Analista-Programador |
| 419 | 1.5.3.4 | **Adición al archivo de proyectos de la empresa** | 0.02d | 2019-04-29 14:48 | 2019-04-29 14:58 | 416, 414, 412 | 125.42d |  |
| 420 | 1.9.5.4.1 | Añadir los documentos creados al archivo de la empresa | 0.02d | 2019-04-29 14:48 | 2019-04-29 14:58 |  | 125.42d | Director de proyecto |
